# Building

Schedule from MS Project, 2014-03-01 to 2015-04-30, costs in ₽.

## Calendars

- Стандартный: Mon-Fri 09:00-13:00, 14:00-18:00; Sat-Sun off. Exceptions (off unless hours are given): 2014-11-04 (День согласия и примирения), 2014-12-31 to 2015-01-10 (Новогодние праздники).

## Resources

| Resource | Unit | Rate | Cost per use |
| --- | --- | --- | --- |
| Архитектор |  |  | 55000 |
| МУП "Горгаз" |  |  | 70000 |
| МУП "Водоканал" |  |  | 50000 |
| АО "Водолей" |  |  | 50000 |
| Рабочий1 |  | 125 |  |
| Рабочий2 |  | 125 |  |
| Рабочий3 |  | 125 |  |
| Подсобник1 |  | 50 |  |
| Подсобник2 |  | 50 |  |
| Трактор |  |  | 7000 |
| Плотник1 |  | 187.5 |  |
| Плотник2 |  | 187.5 |  |
| "Неопласт" |  |  | 120000 |
| Водопроводчик1 |  | 100 |  |
| Водопроводчик2 |  | 100 |  |
| Электрик |  | 125 |  |
| АО "Газовик" |  |  | 25000 |
| ООО "Потолки" |  |  | 150000 |
| Песок | т | 500 |  |
| Щебень | т | 600 |  |
| Цемент |  |  |  |
| Кирпич | шт | 7 |  |
| Брус |  |  | 25000 |
| Доска обрезная | м3 | 7000 |  |
| Доска необрезная | м3 | 5000 |  |
| Шифер |  |  | 40000 |
| Электропровод |  |  | 15000 |
| Электросчетчик |  |  | 5000 |
| Труба водопроводная |  |  | 35000 |
| Труба канализационная |  |  | 30000 |
| Штукатурка |  |  | 150000 |
| Потолок | м2 | 150 |  |
| Окно |  | 10000 |  |
| Дверь наружная |  |  | 20000 |
| Труба отопительная |  |  | 20000 |
| Котел |  |  | 40000 |
| Печь газовая |  |  | 20000 |
| Ванна |  | 45000 |  |
| Унитаз компакт |  | 20000 |  |
| Раковина |  | 16000 |  |
| Кран |  | 7000 |  |
| Паркет | м2 | 550 |  |
| Труба газовая |  |  | 50000 |
| Дверь внутренняя |  | 9000 |  |
| Доставка |  |  |  |

## Schedule

| ID | WBS | Task | Type | Duration | Start | Finish | Predecessors | Total slack | Resources | Work | Cost |
| --- | --- | --- | --- | --- | --- | --- | --- | --- | --- | --- | --- |
| 1 | 1 | Начало проекта | milestone | 0d | 2014-03-01 | 2014-03-01 |  | 0d |  |  |  |
| 2 | 2 | **Утверждение проектов** |  | 90d | 2014-03-01 | 2014-07-04 |  | 0d |  | 1800h | 225,000 |
| 3 | 2.1 | Начало утверждения проектов | milestone | 0d | 2014-03-01 | 2014-03-01 | 1 | 0d |  |  |  |
| 4 | 2.2 | Утверждение проекта на строительство |  | 90d | 2014-03-03 | 2014-07-04 | 3 | 0d | Архитектор | 720h | 55,000 |
| 5 | 2.3 | Утверждение проекта на газ |  | 90d | 2014-03-03 | 2014-07-04 | 3 | 0d | МУП "Горгаз" | 480h | 70,000 |
| 6 | 2.4 | Утверждение проекта на водопровод и канализацию |  | 60d | 2014-03-03 | 2014-05-23 | 3 | 30d | МУП "Водоканал" | 240h | 50,000 |
| 7 | 2.5 | Утверждение проекта на отопление |  | 90d | 2014-03-03 | 2014-07-04 | 3 | 0d | АО "Водолей" | 360h | 50,000 |
| 8 | 2.6 | Проекты утверждены | milestone | 0d | 2014-07-04 | 2014-07-04 | 4, 5, 6, 7 | 0d |  |  |  |
| 9 | 3 | **Строительство фундамента** |  | 45d | 2014-07-04 | 2014-09-05 |  | 0d |  | 680h | 101,500 |
| 10 | 3.1 | Начало закладки фундамента | milestone | 0d | 2014-07-04 | 2014-07-04 | 8 | 0d |  |  |  |
| 11 | 3.2 | Рытье траншей |  | 10d | 2014-07-07 | 2014-07-18 | 10 | 0d | Рабочий1; Рабочий2; Рабочий3; Подсобник1; Подсобник2; Трактор | 480h | 45,000 |
| 12 | 3.3 | Заливка фундамента |  | 5d | 2014-07-21 | 2014-07-25 | 11 | 0d | Рабочий1; Рабочий2; Рабочий3; Подсобник1; Подсобник2; Песок [10 т]; Щебень [12.5 т]; Цемент [300%]; Доска необрезная [5 м3]; Доставка [0.1%] | 200h | 56,500 |
| 13 | 3.4 | Фундамент завершен | milestone | 0d | 2014-09-05 | 2014-09-05 | 12FS+30d | 0d |  |  |  |
| 14 | 4 | **Каркас и крыша** |  | 110d | 2014-09-05 | 2015-02-19 |  | 0d |  | 3616h | 1,406,000 |
| 15 | 4.1 | Начало каркаса | milestone | 0d | 2014-09-05 | 2014-09-05 | 13 | 0d |  |  |  |
| 16 | 4.2 | Кладка стен |  | 60d | 2014-09-08 | 2014-12-01 | 15 | 0d | Рабочий1; Рабочий2; Рабочий3; Подсобник1; Подсобник2; Песок [6 т]; Цемент [200000%]; Доставка [0.1%]; Кирпич [70000 шт] | 2400h | 746,000 |
| 17 | 4.3 | Перекрытие стен |  | 15d | 2014-12-02 | 2014-12-22 | 16 | 0d | Рабочий1; Рабочий2; Рабочий3; Подсобник1; Подсобник2; Доставка [0.1%]; Брус; Доска обрезная [7 м3] | 600h | 146,000 |
| 18 | 4.4 | Установка крыши |  | 30d | 2014-12-23 | 2015-02-12 | 17 | 5d | Плотник1; Плотник2; Доска необрезная [10 м3]; Шифер; Доставка [0.1%] | 480h | 192,000 |
| 19 | 4.5 | Установка наружных дверей и окон |  | 7d | 2014-12-23 | 2015-01-12 | 17 | 28d | "Неопласт"; Окно [900%]; Дверь наружная | 56h | 230,000 |
| 20 | 4.6 | Установка полов |  | 5d | 2015-02-13 | 2015-02-19 | 17 | 0d | Плотник1; Плотник2; Доска обрезная [10 м3]; Доставка [0.1%] | 80h | 92,000 |
| 21 | 4.7 | Каркас готов | milestone | 0d | 2015-02-19 | 2015-02-19 | 18, 19, 20 | 0d |  |  |  |
| 22 | 5 | **Коммуникации** |  | 10d | 2015-02-19 | 2015-03-05 |  | 0d |  | 240h | 181,000 |
| 23 | 5.1 | Начало установки коммуникаций | milestone | 0d | 2015-02-19 | 2015-02-19 | 21 | 0d |  |  |  |
| 24 | 5.2 | Проведение и подключение водопровода и канализации |  | 10d | 2015-02-20 | 2015-03-05 | 23 | 0d | Водопроводчик1; Водопроводчик2; Труба водопроводная; Труба канализационная | 160h | 81,000 |
| 25 | 5.3 | Установка и подключение электропроводки |  | 5d | 2015-02-20 | 2015-02-26 | 23 | 5d | Электрик; Электросчетчик; Электропровод | 40h | 25,000 |
| 26 | 5.4 | Установка и подключение газовых коммуникаций |  | 5d | 2015-02-20 | 2015-02-26 | 23 | 5d | АО "Газовик"; Труба газовая | 40h | 75,000 |
| 27 | 5.5 | Коммуникации готовы | milestone | 0d | 2015-03-05 | 2015-03-05 | 24, 25, 26 | 0d |  |  |  |

| ID | WBS | Task | Type | Duration | Start | Finish | Predecessors | Total slack | Resources | Work | Cost |
| --- | --- | --- | --- | --- | --- | --- | --- | --- | --- | --- | --- |
| 28 | 6 | **Внутренняя отделка** |  | 40d | 2015-03-05 | 2015-04-30 |  | 0d |  | 1160h | 881,400 |
| 29 | 6.1 | Начало отделки | milestone | 0d | 2015-03-05 | 2015-03-05 | 27 | 0d |  |  |  |
| 30 | 6.2 | Внутренние двери |  | 10d | 2015-03-06 | 2015-03-19 | 29 | 0d | Плотник1; Плотник2; Дверь внутренняя [1000%]; Доставка [0.1%] | 160h | 115,000 |
| 31 | 6.3 | Навесные потолки |  | 5d | 2015-03-20 | 2015-03-26 | 30 | 5d | ООО "Потолки"; Потолок [190 м2] | 40h | 178,500 |
| 32 | 6.4 | Отделка стен |  | 3d | 2015-03-20 | 2015-03-24 | 30 | 12d | Рабочий1; Рабочий2; Рабочий3; Подсобник1; Подсобник2; Штукатурка | 120h | 161,400 |
| 33 | 6.5 | Монтаж отопления |  | 10d | 2015-03-20 | 2015-04-02 | 30 | 0d | Водопроводчик1; Водопроводчик2; Труба отопительная | 160h | 36,000 |
| 34 | 6.6 | Установка оборудования, приборов и сантехники |  | 5d | 2015-04-03 | 2015-04-09 | 31, 33 | 0d | Водопроводчик1; Водопроводчик2; Котел; Печь газовая; Ванна; Унитаз компакт [200%]; Раковина [300%]; Кран [400%] | 80h | 229,000 |
| 35 | 6.7 | Настил полов |  | 15d | 2015-04-10 | 2015-04-30 | 32, 34 | 0d | Рабочий1; Рабочий2; Рабочий3; Подсобник1; Подсобник2; Паркет [190 м2] | 600h | 161,500 |
| 36 | 6.8 | Конец отделки | milestone | 0d | 2015-04-30 | 2015-04-30 | 35 | 0d |  |  |  |
| 37 | 7 | Конец проекта | milestone | 0d | 2015-04-30 | 2015-04-30 | 36 | 0d |  |  |  |
